Schedule from MS Project XML, 2022-03-21 to 2022-06-20.

## Calendars

- Standard[Imported]: Mon-Sun 16:00-20:00.

## Resources

| Resource |
| --- |
| Unassigned |
| Architect |
| Architecture Reviewer |
| Business-Process Analyst |
| Business Designer |
| Business-Model Reviewer |
| Code Reviewer |
| Configuration Manager |
| Course Developer |
| Database Designer |
| Deployment Manager |
| Design Reviewer |
| Designer |
| Implementer |
| Integration Tester |
| Performance Tester |
| Process Engineer |
| Project Manager |
| Requirements Reviewer |
| Stakeholder |
| System Administrator |
| System Analyst |
| System Integrator |
| System Tester |
| Technical Writer |
| Test Designer |
| Tool Smith |
| Use-Case Author |
| User-Interface Designer |
| Milan |

## Schedule

| ID | WBS | Task | Type | Duration | Start | Finish | Predecessors | Baseline start | Baseline finish | Constraint |
| --- | --- | --- | --- | --- | --- | --- | --- | --- | --- | --- |
| 1 | 1 | **Očekivani rezultati** |  | 46d | 2022-03-21 | 2022-06-20 |  | 1998-06-11 | 1998-10-19 | start no earlier than 2022-03-21 |
| 2 | 1.1 | Početak projekta | milestone | 0d | 2022-03-21 | 2022-03-21 | 14SS | 1998-06-11 | 1998-06-11 |  |
| 3 | 1.2 | Vizija sistema | milestone | 0d | 2022-03-31 | 2022-03-31 | 17 | 1998-06-17 | 1998-06-17 |  |
| 4 | 1.3 | Dokument o zahtevima | milestone | 0d | 2022-04-17 | 2022-04-17 | 22 |  |  |  |
| 5 | 1.4 | Arhitekturni prototip | milestone | 0d | 2022-04-20 | 2022-04-20 | 23 |  |  |  |
| 6 | 1.5 | Prototip korisničkog interfejsa | milestone | 0d | 2022-04-24 | 2022-04-24 | 25 |  |  |  |
| 7 | 1.6 | Arhitekturni projekat | milestone | 0d | 2022-05-01 | 2022-05-01 | 26 | 1998-08-20 | 1998-08-20 |  |
| 8 | 1.7 | Detaljni projekat | milestone | 0d | 2022-05-25 | 2022-05-25 | 29 | 1998-10-06 | 1998-10-06 |  |
| 9 | 1.8 | Beta verzija | milestone | 0d | 2022-05-25 | 2022-05-25 | 30 | 1998-10-19 | 1998-10-19 |  |
| 10 | 1.9 | Plan testiranja | milestone | 0d | 2022-05-29 | 2022-05-29 | 31 |  |  |  |
| 11 | 1.10 | Izveštaj o testiranju | milestone | 0d | 2022-06-13 | 2022-06-13 | 37 |  |  |  |
| 12 | 1.11 | Konačna verzija | milestone | 0d | 2022-06-14 | 2022-06-14 | 34 |  |  |  |
| 13 | 1.13 | Prezentacija proizvoda | milestone | 0d | 2022-06-20 | 2022-06-20 | 39 |  |  | start no earlier than 2022-06-15 |
| 14 | 2 | **Faza planiranja projekta** |  | 9d | 2022-03-21 | 2022-04-07 |  | 1998-06-11 | 1998-06-17 | start no earlier than 2022-03-21 |
| 15 | 2.1 | **Preliminarna iteracija** |  | 9d | 2022-03-21 | 2022-04-07 |  | 1998-06-11 | 1998-06-17 |  |
| 17 | 2.1.2 | Izrada vizije sistema |  | 2d | 2022-03-28 | 2022-03-31 |  | 1998-06-11 | 1998-06-17 |  |
| 18 | 2.1.3 | Modelovanje domena |  | 0.5d | 2022-04-01 | 2022-04-01 | 17 | 1998-06-11 | 1998-06-17 |  |
| 19 | 2.1.4 | Analiza slučajeva korišćenja |  | 3d | 2022-04-02 | 2022-04-07 | 18 | 1998-06-19 | 1998-06-23 |  |
| 20 | 3 | **Faza razrade projekta** |  | 10.5d | 2022-04-11 | 2022-05-01 | 14 | 1998-06-18 | 1998-08-20 |  |
| 21 | 3.1 | **Iteracija R1 - Razvoj arhitekturnog prototipa** |  | 10.5d | 2022-04-11 | 2022-05-01 |  | 1998-06-18 | 1998-07-20 |  |
| 22 | 3.1.1 | Izrada dokumenta o zahtevima |  | 3.5d | 2022-04-11 | 2022-04-17 |  | 1998-06-19 | 1998-06-25 | start no earlier than 2022-04-11 |
| 23 | 3.1.2 | Implementacija arhitekturnog prototipa |  | 5d | 2022-04-11 | 2022-04-20 |  | 1998-07-01 | 1998-07-10 | start no earlier than 2022-04-11 |
| 24 | 3.1.3 | Testiranje arhitekture |  | 0.5d | 2022-04-21 | 2022-04-21 | 23 | 1998-07-08 | 1998-07-16 |  |
| 25 | 3.1.4 | Implementacija prototipa korisničkog interfejsa |  | 1.5d | 2022-04-22 | 2022-04-24 | 24 | 1998-06-18 | 1998-07-20 |  |
| 26 | 3.1.5 | Izrada arhitekturnog projekta |  | 3.5d | 2022-04-25 | 2022-05-01 | 25 | 1998-06-23 | 1998-07-06 |  |

| ID | WBS | Task | Duration | Start | Finish | Predecessors | Baseline start | Baseline finish |
| --- | --- | --- | --- | --- | --- | --- | --- | --- |
| 27 | 4 | **Faza izrade projekta** | 22d | 2022-05-02 | 2022-06-14 | 20 | 1998-08-21 | 1998-10-06 |
| 28 | 4.1 | **Iteracija I1 - Razvoj beta verzije** | 17d | 2022-05-02 | 2022-06-04 |  | 1998-08-21 | 1998-09-04 |
| 29 | 4.1.1 | Izrada detaljnog projekta | 12d | 2022-05-02 | 2022-05-25 |  |  |  |
| 30 | 4.1.2 | Implementacija beta verzije | 12d | 2022-05-02 | 2022-05-25 |  | 1998-08-24 | 1998-08-31 |
| 31 | 4.1.3 | Izrada plana testiranja | 2d | 2022-05-26 | 2022-05-29 | 30 |  |  |
| 32 | 4.1.4 | Testiranje sistema | 3d | 2022-05-30 | 2022-06-04 | 31 | 1998-08-24 | 1998-09-02 |
| 33 | 4.1.5 | Izrada izveštaja o testiranju | 1d | 2022-05-30 | 2022-05-31 | 31 | 1998-08-21 | 1998-09-04 |
| 34 | 4.2 | **Iteracija I2 - Razvoj konačne verzije** | 5d | 2022-06-05 | 2022-06-14 | 28 | 1998-09-07 | 1998-09-21 |
| 35 | 4.2.1 | Implementacija konačne verzije | 4d | 2022-06-05 | 2022-06-12 |  | 1998-09-08 | 1998-09-15 |
| 36 | 4.2.2 | Testiranje konačne verzije | 1d | 2022-06-13 | 2022-06-14 | 35 | 1998-09-08 | 1998-09-17 |
| 37 | 4.2.3 | Ažuriranje izveštaja o testiranju | 0.5d | 2022-06-13 | 2022-06-13 | 35 | 1998-09-07 | 1998-09-21 |
| 38 | 5 | **Faza okončanja projekta** | 3d | 2022-06-15 | 2022-06-20 | 34 | 1998-10-07 | 1998-10-19 |
| 39 | 5.1 | **Iteracija O1 - Instalacija sistema** | 3d | 2022-06-15 | 2022-06-20 |  | 1998-10-07 | 1998-10-19 |
| 40 | 5.1.1 | Sređivanje projektne dokumentacije | 3d | 2022-06-15 | 2022-06-20 |  |  |  |
| 41 | 5.1.3 | Instalacija sistema | 0.5d | 2022-06-15 | 2022-06-15 |  |  |  |
